How a schedule from an exported table changed from version to version. A marks actual dates.

## Version 1 (saved 2026-11-19)

Note of the change: docs(mpi): add comprehensive mpi report docx and ms project tasks import csv

| ID | Task | Start | Finish |
| --- | --- | --- | --- |
| 1 | INISIASI & PERENCANAAN PROYEK | 2026-10-26 | 2026-10-30 |
| 2 | Penyusunan Project Charter & Analisis Kebutuhan | 2026-10-26 | 2026-10-27 |
| 3 | Riset Formula Biometrik Olahraga (VDOT, LTHR, TRIMP, ACWR) | 2026-10-27 | 2026-10-28 |
| 4 | Penetapan Arsitektur Clean Architecture / DDD & Tech Stack Next.js 16 | 2026-10-29 | 2026-10-30 |
| 5 | Milestone 1: Project Charter & Baseline Arsitektur Disetujui | 2026-10-30 | 2026-10-30 |
| 6 | DESAIN SISTEM & REKAYASA ANTARMUKA | 2026-11-02 | 2026-11-05 |
| 7 | Perancangan Skema Domain Model & Telemetri Pipeline Garmin | 2026-11-02 | 2026-11-03 |
| 8 | Desain Sistem Visual Cyber-Athletic & Komponen Brutalist | 2026-11-03 | 2026-11-04 |
| 9 | Wireframe & Responsive Design Mockups (Desktop & Mobile) | 2026-11-04 | 2026-11-05 |
| 10 | Milestone 2: Design System & Wireframe UI Terverifikasi | 2026-11-05 | 2026-11-05 |
| 11 | PENGEMBANGAN FITUR & SPRINT DEVELOPMENT | 2026-11-06 | 2026-11-17 |
| 12 | Sprint 1: Garmin Connect API Client & Engine Biometrik Inti | 2026-11-06 | 2026-11-08 |
| 13 | Implementasi Garmin Client, Token OAuth & File Mapper | 2026-11-06 | 2026-11-06 |
| 14 | Kalkulator ACWR (Acute-to-Chronic Ratio 7D/28D) & Safe Zone | 2026-11-07 | 2026-11-07 |
| 15 | Bannister TRIMP & Karvonen Heart Rate Reserve (HRR) | 2026-11-08 | 2026-11-08 |
| 16 | Sprint 2: Telemetri Sesi Lari, Peta GPS & Strava-style Splits | 2026-11-09 | 2026-11-10 |
| 17 | Detail Aktivitas (`/activities/[id]`) & Leaflet Map Polyline | 2026-11-09 | 2026-11-09 |
| 18 | Tabel Splits KM dengan Dynamic Pace Bar & Negative Split Detection | 2026-11-10 | 2026-11-10 |
| 19 | Sprint 3: Fisiologi Lanjut (Jack Daniels VDOT, GCT, Hydration) | 2026-11-11 | 2026-11-13 |
| 20 | Jack Daniels VDOT 5-Zone Paces System & Interactive Slider | 2026-11-11 | 2026-11-11 |
| 21 | Ground Contact Time (GCT) Foot Balance L/R Injury Radar | 2026-11-12 | 2026-11-12 |
| 22 | Protokol Hidrasi & Nutrisi Pasca Lari (ACSM Sweat & Glycogen Lab) | 2026-11-13 | 2026-11-13 |
| 23 | Sprint 4: Multi-Metode Kalibrasi HR, Stream Sync & Mobile Polish | 2026-11-16 | 2026-11-17 |
| 24 | Universal HR Zone Engine (%HRR, %LTHR, %Max HR, Manual BPM) | 2026-11-16 | 2026-11-16 |
| 25 | Sinkronisasi Telemetri Stream Sesi & Kunci Plafon Max HR 201 BPM | 2026-11-17 | 2026-11-17 |
| 26 | Mobile Viewport Guardrails & Dedicated Zone Cards (iPhone 16 / 393px) | 2026-11-17 | 2026-11-17 |
| 27 | Milestone 3: Seluruh Fitur Telemetri & Engine Biometrik Selesai | 2026-11-17 | 2026-11-17 |
| 28 | PENGUJIAN SISTEM & JAMINAN KUALITAS (QA / UAT) | 2026-11-18 | 2026-11-18 |
| 29 | Unit & Integration Testing Kalkulator Domain (0 Errors) | 2026-11-18 | 2026-11-18 |
| 30 | Cross-Device Responsive & Viewport Testing (iOS, Android, Desktop) | 2026-11-18 | 2026-11-18 |
| 31 | User Acceptance Testing (UAT) dengan Atlet & Pelatih Lari | 2026-11-18 | 2026-11-18 |
| 32 | Milestone 4: UAT Berhasil 100% & Production Build Verifikasi | 2026-11-18 | 2026-11-18 |
| 33 | PENUTUPAN PROYEK & DOKUMENTASI AKHIR | 2026-11-19 | 2026-11-19 |
| 34 | Penyusunan Laporan Manajemen Proyek Informatika (MPI) Komprehensif | 2026-11-19 | 2026-11-19 |
| 35 | Ekspor Berkas MS Project (WBS, Gantt, EVM, Resource Sheet) | 2026-11-19 | 2026-11-19 |
| 36 | Update Changelog Versi v1.0.0 & Final Repository Clean | 2026-11-19 | 2026-11-19 |
| 37 | Milestone 5: Serah Terima Final Proyek & Siap Operasional | 2026-11-19 | 2026-11-19 |

## Version 2 (saved 2026-11-24)

Note of the change: feat(demo): sanitize 1-click demo to athlete Bimo Pratama, anonymize activities, and add preview watermark on landing teaser

Last finish 2026-11-19 → 2026-11-20 (+1d).

Added:

| ID | Task | Start | Finish |
| --- | --- | --- | --- |
| 38 | CHANGE REQUEST CR-01 (RELEASE v1.1.0 - HARDENING & DUAL-ROLE COACH) | 2026-11-20 | 2026-11-20 |
| 39 | Security Hardening (API Auth Guard, BYOK Token Cache, Open Redirect Fix) | 2026-11-20 | 2026-11-20 |
| 40 | Dual-Role Coach Portal, GPX Import & Supabase Hybrid Sync Schema | 2026-11-20 | 2026-11-20 |
| 41 | Automated Domain Unit Test Suite (6 Kalkulator Domain - 9/9 Pass) | 2026-11-20 | 2026-11-20 |
| 42 | Milestone 6: Release v1.1.0 Terverifikasi & Sinkronisasi Dokumen MPI | 2026-11-20 | 2026-11-20 |
